# PRD2018-G10-甘特图v0.6

Schedule from MS Project, 2018-09-19 to 2019-01-18, A marks actual dates.
HP

## Calendars

- 标准: Mon-Fri 08:00-12:00, 13:00-17:00; Sat-Sun 08:00-17:00.

## Resources

| Resource |
| --- |
| 李俊 |
| 黄浩峰 |
| 叶忠杰 |
| 夏昌灏 |
| 吴荣欣 |
| 吴荣鑫 |

## Schedule

| ID | WBS | Task | Type | Duration | Start | Finish | Predecessors | Complete | Remaining | Actual start | Resources | Work | Actual work | 输出 | 输入 |
| --- | --- | --- | --- | --- | --- | --- | --- | --- | --- | --- | --- | --- | --- | --- | --- |
| 1 | 1 | **需求工程项目准备** |  | 52.88d | 2018-09-28 | 2018-11-17 |  | 86% | 7.14d | 2018-09-19 |  | 486.24h | 431.1h |  |  |
| 2 | 1.1 | 人员召集 | manual | 1d | 2018-09-19 A | 2018-09-19 A |  | 100% |  |  | 李俊 [30%]; 黄浩峰 [20%]; 叶忠杰 [20%]; 夏昌灏 [15%]; 吴荣欣 [15%] | 8h | 8h | 人员名单 |  |
| 3 | 1.2 | 课题选定 | manual | 9.5d | 2018-09-19 A | 2018-09-28 A | 2 | 100% |  |  | 李俊 [25%]; 黄浩峰 [20%]; 叶忠杰 [20%]; 吴荣欣 [15%]; 夏昌灏 [20%] | 76h | 76h |  |  |
| 4 | 1.3 | 软件环境配置 | manual | 5.25d | 2018-09-19 A | 2018-09-23 A |  | 100% |  |  | 李俊 [20%]; 黄浩峰 [20%]; 叶忠杰 [20%]; 夏昌灏 [20%]; 吴荣欣 [20%] | 42h | 42h |  |  |
| 6 | 1.4 | 确定小组名单 | manual | 1h | 2018-09-29 A | 2018-09-29 A |  | 100% |  |  | 李俊 [25%]; 黄浩峰 [25%]; 叶忠杰 [25%]; 夏昌灏 [10%]; 吴荣欣 [15%] | 1h | 1h |  |  |
| 7 | 1.5 | **工程项目计划** |  | 35.12d | 2018-10-15 | 2018-11-17 |  | 95% | 1.79d | 2018-09-26 |  | 111.44h | 106.3h |  |  |
| 8 | 1.5.1 | WBS | manual | 2d | 2018-09-26 A | 2018-09-27 A |  | 100% |  |  | 黄浩峰 | 16h | 16h | 初步的WBS |  |
| 9 | 1.5.2 | 甘特图 | manual | 0.25d | 2018-09-27 A | 2018-09-27 |  | 40% | 0.15d |  | 李俊 | 2h | 0.8h | 初步的甘特图 |  |
| 10 | 1.5.3 | OBS | manual | 0.25d | 2018-09-28 A | 2018-09-28 A |  | 100% |  |  | 黄浩峰 | 2h | 2h | 初步的OBS图 |  |
| 11 | 1.5.4 | 软件需求工程项目计划 | manual | 1.2d | 2018-09-26 A | 2018-09-30 |  | 52% | 0.58d |  | 李俊 [35%]; 黄浩峰 [35%]; 吴荣欣 [30%] | 6.24h | 2.3h | 软件需求工程项目计划V0.1 |  |
| 12 | 1.5.5 | 第二次正式会议 | manual | 1h | 2018-10-06 A | 2018-10-06 A |  | 100% |  |  | 李俊 [20%]; 黄浩峰 [20%]; 夏昌灏 [20%]; 吴荣欣 [20%]; 叶忠杰 [20%] | 1h | 1h | 第二次会议记录 |  |
| 13 | 1.5.6 | 范围管理计划 | manual | 1d | 2018-10-11 A | 2018-10-11 A |  | 100% |  |  | 黄浩峰 | 8h | 8h | 前景与范围文档 | 选题说明 |
| 14 | 1.5.7 | 人力资源管理计划 | manual | 8h | 2018-10-11 A | 2018-10-11 A |  | 100% |  |  | 李俊 [50%]; 夏昌灏 [50%] | 8h | 8h | 人力资源管理计划 | 人力资源管理计划模板 |
| 15 | 1.5.8 | 风险管理计划 | manual | 0.25d | 2018-10-12 A | 2018-10-12 A |  | 100% |  |  | 吴荣欣 | 2h | 2h | 风险管理计划 | 风险管理计划模板 |
| 16 | 1.5.9 | 成本管理计划 | manual | 1d | 2018-10-12 A | 2018-10-12 A |  | 100% |  |  | 夏昌灏 [50%]; 叶忠杰 [50%] | 8h | 8h | 成本管理计划 | 成本管理计划模板 |
| 17 | 1.5.10 | 采购管理计划 | manual | 1d | 2018-10-13 A | 2018-10-13 A |  | 100% |  |  | 黄浩峰 | 8h | 8h | 采购管理计划 | 采购管理计划模板 |
| 18 | 1.5.11 | 沟通管理计划 | milestone, manual | 0d | 2018-10-13 A | 2018-10-13 A |  | 100% |  |  | 夏昌灏 |  |  | 沟通管理计划 | 沟通管理计划模板 |
| 19 | 1.5.12 | 第三次正式会议 | milestone, manual | 0h | 2018-10-13 A | 2018-10-13 A |  | 100% |  |  | 黄浩峰 [20%]; 李俊 [20%]; 吴荣欣 [20%]; 夏昌灏 [20%]; 叶忠杰 [20%] | 0.2h | 0.2h | 第三次会议记录 |  |
| 20 | 1.5.13 | 整合计划 | manual | 1d | 2018-10-13 A | 2018-10-14 A | 14, 15, 16, 18, 17, 13 | 100% |  |  | 李俊 [50%]; 叶忠杰 [50%] | 8h | 8h | 初步的需求项目工程计划 | 人力资源管理计划，风险管理计划，成本管理计划，沟通管理计划，采购管理计划 |
| 21 | 1.5.14 | 初步分析可行性 | manual | 5.25d | 2018-10-10 A | 2018-10-14 A | 20 | 100% |  |  | 夏昌灏; 叶忠杰 | 42h | 42h | 初步的可行性分析报告 | 需求工程项目计划 |
| 22 | 1.6 | 翻转：UML概述PPT | milestone, manual | 3.25d | 2018-10-12 A | 2018-10-14 A |  | 100% |  |  | 黄浩峰 [60%]; 李俊 [40%] | 26h | 26h |  |  |
| 23 | 1.7 | 第四次正式会议 | manual | 1h | 2018-10-20 A | 2018-10-20 A |  | 100% |  |  | 李俊 [20%]; 黄浩峰 [20%]; 吴荣欣 [20%]; 夏昌灏 [20%]; 叶忠杰 [20%] | 1h | 1h | 第四次会议记录 |  |
| 24 | 1.8 | 编写项目章程 | milestone, manual | 0d | 2018-10-17 A | 2018-10-21 A |  | 100% |  |  | 李俊 | 42h | 42h | 项目章程 |  |
| 25 | 1.9 | 项目总体计划 | milestone, manual | 0d | 2018-10-17 A | 2018-10-21 A |  | 100% |  |  | 叶忠杰 [30%]; 夏昌灏 [30%]; 吴荣欣 [30%] | 12.6h | 12.6h | 总体计划 |  |
| 26 | 1.10 | 项目工程计划-初步 | milestone, manual | 0d | 2018-10-17 A | 2018-10-21 A | 11 | 100% |  |  | 李俊 [50%]; 黄浩峰 [50%] | 21h | 21h | 需求工程计划-初步 | 软件需求工程项目计划 |
| 27 | 1.11 | 翻转：UML工具PPT | milestone, manual | 0d | 2018-10-17 A | 2018-10-21 A |  | 100% |  |  | 夏昌灏 [70%]; 吴荣欣 [30%] |  |  |  |  |
| 28 | 1.12 | 第五次会议记录 | milestone, manual | 0h | 2018-10-27 A | 2018-10-27 A |  | 100% |  |  | 黄浩峰 [20%]; 李俊 [20%]; 吴荣欣 [20%]; 夏昌灏 [20%]; 叶忠杰 [20%] | 0.2h | 0.2h | 第五次会议记录 |  |
| 29 | 1.13 | 质量保证计划 | manual | 4.12d | 2018-10-28 A | 2018-10-31 A |  | 100% |  |  | 夏昌灏 [50%]; 吴荣欣 [50%] | 33h | 33h | 质量保证计划 |  |
| 30 | 1.14 | 翻转：UML基础I | milestone, manual | 4.12d | 2018-10-28 A | 2018-10-31 A |  | 100% |  |  | 叶忠杰 [30%]; 吴荣欣 [70%] | 33h | 33h |  |  |
| 31 | 1.15 | 翻转：UML界面原型 | milestone, manual | 5.25d | 2018-10-31 A | 2018-11-04 |  | 50% | 2.62d |  | 吴荣欣 [70%]; 叶忠杰 [30%] | 42h | 21h |  |  |
| 32 | 1.16 | 第六次正式会议 | manual | 1h | 2018-11-03 | 2018-11-03 |  |  |  |  | 黄浩峰 [25%]; 李俊 [15%]; 吴荣欣 [25%]; 叶忠杰 [20%]; 夏昌灏 [15%] | 1h |  | 第六次会议记录 |  |
| 33 | 1.17 | 第七次正式会议 | manual | 1h | 2018-11-10 | 2018-11-10 |  |  |  |  | 黄浩峰 [25%]; 李俊 [25%]; 吴荣欣; 叶忠杰 [25%]; 夏昌灏 [25%] | 1h |  | 第七次会议记录 |  |
| 34 | 1.18 | 第八次正式会议 | manual | 1h | 2018-11-17 | 2018-11-17 |  |  |  |  | 黄浩峰 [15%]; 李俊 [15%]; 吴荣欣 [25%]; 叶忠杰 [25%]; 夏昌灏 [20%] | 1h |  | 第八次会议记录 |  |
| 35 | 1.19 | 正式发布软件需求工程项目计划 | milestone, manual | 3.25d | 2018-11-16 | 2018-11-18 | 20, 21 |  |  |  | 李俊 [25%]; 夏昌灏 [25%]; 黄浩峰 [20%]; 叶忠杰 [15%]; 吴荣欣 [15%] | 26h |  | 软件需求项目工程计划 | 初步的需求项目计划工程 |

| ID | WBS | Task | Type | Duration | Start | Finish | Predecessors | Resources | Work | 输入 | 输出 |
| --- | --- | --- | --- | --- | --- | --- | --- | --- | --- | --- | --- |
| 36 | 2 | **需求工程开发过程** |  | 49.75d | 2018-11-07 | 2018-12-24 | 1, 35 |  | 637h |  |  |
| 37 | 2.1 | **需求获取** |  | 25.88d | 2018-11-07 | 2018-12-01 | 35 |  | 218h |  |  |
| 38 | 2.1.1 | 确定需求开发过程 | manual | 1d | 2018-11-07 | 2018-11-07 | 35 | 李俊 [30%]; 叶忠杰 [70%] | 8h | 初步的甘特图 | 修改的甘特图 |
| 39 | 2.1.2 | 建立核心队伍 | manual | 1d | 2018-11-10 | 2018-11-10 |  | 黄浩峰 [20%]; 李俊 [20%]; 吴荣欣 [20%]; 夏昌灏 [20%]; 叶忠杰 [20%] | 8h | 小组名单 | 核心队伍人员责任表 |
| 40 | 2.1.3 | 初步确定使用实例 | manual | 10.5d | 2018-11-16 | 2018-11-25 |  | 叶忠杰 [70%]; 吴荣欣 [30%] | 84h | 访谈记录 | 使用实例文档 |
| 41 | 2.1.4 | 编写项目视图与范围 | manual | 3.25d | 2018-11-23 | 2018-11-25 |  | 叶忠杰 [50%]; 夏昌灏 [50%] | 26h |  |  |
| 42 | 2.1.5 | 用户群分类 | manual | 2d | 2018-11-22 | 2018-11-23 |  | 黄浩峰 [50%]; 夏昌灏 [50%] | 16h | 选题说明 | 用户分类文档 |
| 43 | 2.1.6 | 选择产品代表 | manual | 2d | 2018-11-24 | 2018-11-25 |  | 李俊 [40%]; 叶忠杰 [60%] | 16h | 需求工程项目计划 | 产品代表文档 |
| 44 | 2.1.7 | 确定使用实例 | manual | 1d | 2018-11-25 | 2018-11-26 | 43 | 李俊 [50%]; 黄浩峰 [50%] | 8h |  |  |
| 45 | 2.1.8 | 召开应用程序开发联系会议 | manual | 1.12d | 2018-11-25 | 2018-11-26 |  | 李俊 [40%]; 叶忠杰 [30%]; 吴荣欣 [30%] | 9h |  |  |
| 46 | 2.1.9 | 分析用户工作流程 | manual | 1.12d | 2018-11-26 | 2018-11-27 | 45 | 夏昌灏 [70%]; 吴荣欣 [30%] | 9h | 用户分类文档，产品代表文档，使用实例文档 | 工作流图 |
| 47 | 2.1.10 | 确定质量属性 | manual | 1d? | 2018-11-28 | 2018-11-28 | 46 | 夏昌灏 [50%]; 吴荣欣 [30%]; 叶忠杰 [20%] | 8h |  | 质量属性文档 |
| 48 | 2.1.11 | 检查报告问题 | manual | 1d? | 2018-11-29 | 2018-11-29 | 47 | 叶忠杰 [50%]; 李俊 [50%] | 8h |  | 问题报告文档 |
| 49 | 2.1.12 | 需求重用 | manual | 2d | 2018-12-05 | 2018-12-06 | 48 | 叶忠杰 | 16h | 需求工程项目计划 | 需求重用文档 |
| 50 | 2.1.13 | 第九次正式会议 | manual | 1h | 2018-11-24 | 2018-11-24 |  | 黄浩峰 [20%]; 李俊 [20%]; 吴荣欣 [20%]; 夏昌灏 [20%]; 叶忠杰 [20%] | 1h |  | 第九次会议记录 |
| 51 | 2.1.14 | 第十次正式会议 | manual | 1h | 2018-12-01 | 2018-12-01 |  | 黄浩峰 [15%]; 李俊 [20%]; 吴荣欣 [25%]; 夏昌灏 [25%]; 叶忠杰 [15%] | 1h |  | 第十次会议记录 |
| 52 | 2.2 | **需求分析** |  | 22.75d | 2018-11-30 | 2018-12-21 | 37 |  | 248h |  |  |
| 53 | 2.2.1 | 创建开发原型 | manual | 21.75d | 2018-11-30 | 2018-12-20 |  | 夏昌灏 | 174h |  | 界面原型 |
| 54 | 2.2.2 | 分析可行性 | manual | 2.12d | 2018-11-26 | 2018-11-28 | 44 | 夏昌灏 | 17h | 需求重用文档，需求工程项目计划 | 需求可行性分析文档 |
| 55 | 2.2.3 | 确定需求优先级 | manual | 2.25d | 2018-11-28 | 2018-12-01 | 54 |  |  | 需求可行性分析文档 | 需求优先级文档 |
| 56 | 2.2.4 | 为需求建立模型 | manual | 3.12d | 2018-12-02 | 2018-12-04 | 55 |  |  | 需求可行性分析文档 | 初步的需求模型 |
| 57 | 2.2.5 | 绘制联系图 | manual | 2d | 2018-12-11 | 2018-12-12 | 37 | 夏昌灏; 李俊 | 32h |  | 关联图 |
| 58 | 2.2.6 | 编写数据字典 | manual | 1d | 2018-12-18 | 2018-12-18 | 44 | 吴荣欣 [60%]; 叶忠杰 [40%] | 8h |  | 数据字典 |
| 59 | 2.2.7 | 第十一次正式会议 | manual | 1.12d | 2018-12-08 | 2018-12-08 |  | 黄浩峰 [20%]; 李俊 [20%]; 吴荣欣 [20%]; 夏昌灏 [20%]; 叶忠杰 [20%] | 9h |  | 第十一次会议记录 |
| 60 | 2.2.8 | 应用质量功能调配 | manual | 1d | 2018-12-21 | 2018-12-21 | 53 | 黄浩峰 | 8h |  |  |

| ID | WBS | Task | Type | Duration | Start | Finish | Predecessors | Resources | Work | 输入 | 输出 |
| --- | --- | --- | --- | --- | --- | --- | --- | --- | --- | --- | --- |
| 61 | 2.3 | **需求规格说明** |  | 13.5d | 2018-12-07 | 2018-12-19 | 52 |  | 44h |  |  |
| 62 | 2.3.1 | 采用软件需求规格模板 | manual | 2.12d | 2018-12-07 | 2018-12-08 |  |  |  | 需求工程项目计划 | 需求规格模板 |
| 63 | 2.3.2 | 指明需求来源 | manual | 2.25d | 2018-12-09 | 2018-12-11 | 62 | 黄浩峰 [60%]; 叶忠杰 [40%] | 18h |  | 需求来源 |
| 64 | 2.3.3 | 为每一项需求注上标号 | manual | 1.12d | 2018-12-11 | 2018-12-12 | 63 | 吴荣欣 [55%]; 黄浩峰 [45%] | 9h |  |  |
| 65 | 2.3.4 | 记录业务规范 | manual | 1d? | 2018-12-12 | 2018-12-13 | 64 | 黄浩峰 | 8h |  | 业务规范 |
| 66 | 2.3.5 | 创建需求跟踪能力矩阵 | manual | 7.25d | 2018-12-11 | 2018-12-17 | 65 |  |  | 需求来源，需求规格模板 | 需求跟踪能力矩阵 |
| 67 | 2.3.6 | 第十二次正式会议 | manual | 1.12d | 2018-12-15 | 2018-12-15 |  | 黄浩峰 [20%]; 李俊 [20%]; 吴荣欣 [20%]; 夏昌灏 [20%]; 叶忠杰 [20%] | 9h |  | 第十二次会议记录 |
| 68 | 2.3.7 | 编写软件需求规格说明书 | manual | 2d | 2018-12-13 | 2018-12-15 | 65 |  |  | 需求规格模板 | 初步的SRS文档 |
| 69 | 2.4 | **需求规格审核** |  | 5.25d | 2018-12-20 | 2018-12-24 | 61 |  | 127h |  |  |
| 70 | 2.4.1 | 第十三次正式会议 | manual | 1.12d | 2018-12-22 | 2018-12-22 |  | 黄浩峰 [25%]; 李俊 [25%]; 吴荣欣 [15%]; 夏昌灏 [15%]; 叶忠杰 [20%] | 9h |  | 第十三次会议记录 |
| 71 | 2.4.2 | 审查需求文档 | milestone, manual | 1d? | 2018-12-24 | 2018-12-24 | 68 | 李俊 [70%]; 黄浩峰 [30%] | 8h | 初步的SRS文档 | SRS文档模板 |
| 72 | 2.4.3 | 翻转：UML基础III | milestone, manual | 2.12d | 2018-12-21 | 2018-12-22 |  | 夏昌灏 [60%]; 叶忠杰 [40%] | 17h |  |  |
| 73 | 2.4.4 | 编写测试用例 | manual | 4.25d | 2018-12-15 | 2018-12-19 | 68 | 吴荣鑫 [50%]; 夏昌灏 [25%]; 黄浩峰 [25%] | 34h |  | 测试用例 |
| 74 | 2.4.5 | 编写用户手册 | manual | 4.25d | 2018-12-20 | 2018-12-23 | 68 | 李俊 [50%]; 叶忠杰 [50%] | 34h |  | 用户手册 |
| 75 | 2.4.6 | 确定合格的标准 | manual | 3.12d | 2018-12-20 | 2018-12-22 | 68 | 李俊 [60%]; 叶忠杰 [40%] | 25h | SRS文档模板 | 需求规格说明标准 |
| 76 | 2.5 | 正式发布软件需求规格说明书SRS | milestone, manual | 3d | 2018-12-22 | 2018-12-24 | 61, 52 |  |  |  |  |
| 77 | 3 | **需求管理过程** |  | 14.5d | 2018-12-24 | 2019-01-07 | 76 |  | 210h |  |  |
| 78 | 3.1 | 翻转：UML基础IV | milestone, manual | 2.12d | 2018-12-28 | 2018-12-29 |  | 叶忠杰 [70%]; 吴荣欣 [30%] | 17h |  |  |
| 79 | 3.2 | 第十四次正式会议 | manual | 1.12d | 2018-12-29 | 2018-12-29 |  | 黄浩峰 [20%]; 李俊 [20%]; 吴荣欣 [20%]; 夏昌灏 [20%]; 叶忠杰 [20%] | 9h |  | 第十四次会议记录 |
| 80 | 3.3 | 确定变更控制过程 | manual | 1.12d | 2018-12-24 | 2018-12-25 | 76 | 夏昌灏 [70%]; 吴荣欣 [30%] | 9h |  | 需求变更文档初版 |
| 81 | 3.4 | 建立变更控制委员会 | manual | 2.12d | 2018-12-30 | 2018-12-31 | 80 | 夏昌灏 | 17h |  |  |
| 82 | 3.5 | 进行变更影响分析 | manual | 2.12d | 2018-12-24 | 2018-12-26 | 76 | 吴荣欣 [60%]; 黄浩峰 [40%] | 17h |  |  |
| 83 | 3.6 | 跟踪每一项变更 | manual | 4d | 2018-12-24 | 2018-12-28 | 76 | 叶忠杰 [40%]; 吴荣欣 [60%] | 32h | 需求变更控制文档初版 | 需求变更文档第二版 |
| 84 | 3.7 | 编写需求文档的基准版本和控制版本 | manual | 3.12d | 2019-01-03 | 2019-01-05 | 82 | 黄浩峰 [20%]; 李俊 [20%]; 吴荣欣 [20%]; 夏昌灏 [20%]; 叶忠杰 [20%] | 25h | 需求变更文档第二版 | 需求文档的基准版本和控制版本 |
| 85 | 3.8 | 维护变更历史记录 | manual | 2.25d | 2019-01-05 | 2019-01-06 | 82 | 吴荣欣 [50%]; 李俊 [25%]; 黄浩峰 [25%] | 18h | 需求变更文档第二版 | 需求变更文档 |
| 86 | 3.9 | 跟踪需求状态 | manual | 4.12d | 2018-12-28 | 2019-01-01 | 83 | 夏昌灏 [50%]; 叶忠杰 [50%] | 33h | 需求文档的控制版本和控制版本 | 需求状态文档 |
| 87 | 3.10 | 衡量需求稳定性 | manual | 1d? | 2019-01-01 | 2019-01-02 | 86 | 李俊 [30%]; 夏昌灏 [70%] | 8h | 需求文档的控制版本和基准版本 | 需求稳定性文档 |
| 88 | 3.11 | 使用需求管理工具 | manual | 2d | 2019-01-02 | 2019-01-04 | 87 | 黄浩峰 | 16h |  |  |
| 89 | 3.12 | 第十五次正式会议 | manual | 1.12d | 2018-12-29 | 2018-12-29 |  | 黄浩峰 [15%]; 李俊 [15%]; 吴荣欣 [20%]; 夏昌灏 [25%]; 叶忠杰 [25%] | 9h |  | 第十五次会议记录 |
| 90 | 4 | 发布需求变更文档 | milestone, manual | 1d? | 2019-01-04 | 2019-01-05 |  |  |  |  |  |

| ID | WBS | Task | Type | Duration | Start | Finish | Predecessors | Resources | Work | 输入 | 输出 |
| --- | --- | --- | --- | --- | --- | --- | --- | --- | --- | --- | --- |
| 91 | 5 | **软件概要设计说明** |  | 4d | 2019-01-14 | 2019-01-17 | 76 |  | 74h |  |  |
| 92 | 5.1 | 系统设计与实现 | manual | 2d | 2019-01-14 | 2019-01-15 |  | 叶忠杰 | 16h | 软件需求规格说明书 | 数据库结构图 |
| 93 | 5.2 | 测试计划 | manual | 2d | 2019-01-15 | 2019-01-16 |  | 夏昌灏 | 16h | 软件需求规格说明书 | UML |
| 94 | 5.3 | 培训计划 | manual | 2d | 2019-01-16 | 2019-01-17 |  | 夏昌灏 | 16h |  |  |
| 95 | 5.4 | 部署设计 | manual | 1d | 2019-01-16 | 2019-01-16 |  | 叶忠杰 | 8h |  |  |
| 96 | 5.5 | 第十六次正式会议 | manual | 1.12d | 2019-01-05 | 2019-01-05 |  | 黄浩峰 [20%]; 李俊 [20%]; 吴荣欣 [20%]; 夏昌灏 [20%]; 叶忠杰 [20%] | 9h |  | 第十六次会议记录 |
| 97 | 5.6 | 发布软件概要设计说明 | manual | 1.12d | 2018-11-17 | 2018-11-17 |  |  |  |  |  |
| 98 | 5.7 | 第十七次正式会议 | manual | 1.12d | 2019-01-12 | 2019-01-12 |  | 黄浩峰 [20%]; 李俊 [20%]; 吴荣欣 [25%]; 夏昌灏 [20%]; 叶忠杰 [15%] | 9h |  | 第十七次会议记录 |
| 99 | 6 | 软件维护计划 | manual | 1d? | 2019-01-17 | 2019-01-17 | 76, 90 |  |  |  |  |
| 100 | 7 | 项目收尾--评审 | milestone, manual | 1d | 2019-01-18 | 2019-01-18 | 76, 90 | 黄浩峰 [20%]; 李俊 [20%]; 吴荣欣 [20%]; 夏昌灏 [20%]; 叶忠杰 [20%] | 8h |  | 项目总结 |
